# EAP

Schedule from MS Project, 2017-04-14 to 2017-07-07.

## Calendars

- Padrão: Mon-Fri 09:00-12:00, 13:00-18:00; Sat-Sun off.

## Resources

| Resource |
| --- |
| Natan |
| Tiago |
| Homero |

## Schedule

| ID | WBS | Task | Duration | Start | Finish | Predecessors | Total slack | Resources | Work |
| --- | --- | --- | --- | --- | --- | --- | --- | --- | --- |
| 1 | 1 | **Projeto TalkUniversity** | 60.58d? | 2017-04-14 09:00 | 2017-07-07 14:40 |  |  |  | 663h |
| 2 | 1.1 | **Prospecção** | 3.67d? | 2017-04-14 09:00 | 2017-04-19 15:20 |  | 0d |  | 32h |
| 3 | 1.1.1 | **EAP** | 1.5d? | 2017-04-14 09:00 | 2017-04-17 14:00 |  | 0d |  | 12h |
| 4 | 1.1.1.1 | Definir Estrutura Projeto | 0.5d? | 2017-04-14 09:00 | 2017-04-14 14:00 |  | 0d | Natan | 4h |
| 5 | 1.1.1.2 | Redigir EAP | 1d? | 2017-04-14 14:00 | 2017-04-17 14:00 | 4 | 0d | Natan | 8h |
| 6 | 1.1.2 | **Proposta Técnica** | 2.17d? | 2017-04-17 14:00 | 2017-04-19 15:20 | 5 | 0d |  | 20h |
| 7 | 1.1.2.1 | Reunião para Definição | 0.17d? | 2017-04-17 14:00 | 2017-04-17 15:20 |  | 0d | Natan; Homero; Tiago | 4h |
| 8 | 1.1.2.2 | Redigir Proposta Técnica | 1d? | 2017-04-17 15:20 | 2017-04-18 15:20 | 7 | 0d | Homero | 8h |
| 9 | 1.1.2.3 | Revisar Proposta Técnica | 1d? | 2017-04-18 15:20 | 2017-04-19 15:20 | 8 | 0d | Homero | 8h |
| 10 | 1.2 | **Análise** | 13.92d? | 2017-04-19 15:20 | 2017-05-09 14:40 | 9 | 0d |  | 114h |
| 11 | 1.2.1 | **Documento de Requisitos** | 4.17d? | 2017-04-19 15:20 | 2017-04-25 16:40 |  | 0d |  | 36h |
| 12 | 1.2.1.1 | Reunião Definitiva para definição | 0.17d? | 2017-04-19 15:20 | 2017-04-19 16:40 |  | 0d | Natan; Homero; Tiago | 4h |
| 13 | 1.2.1.2 | Redigir Documento de Requisitos | 3d? | 2017-04-19 16:40 | 2017-04-24 16:40 | 12 | 0d | Tiago | 24h |
| 14 | 1.2.1.3 | Revisar Documento de Requisitos | 1d? | 2017-04-24 16:40 | 2017-04-25 16:40 | 13 | 0d | Natan | 8h |
| 15 | 1.2.2 | **Estimativa de Tamanho Preliminar** | 4d? | 2017-04-25 16:40 | 2017-05-01 16:40 | 14 | 0d |  | 32h |
| 16 | 1.2.2.1 | Analisar DRE | 1d? | 2017-04-25 16:40 | 2017-04-26 16:40 |  | 0d | Homero | 8h |
| 17 | 1.2.2.2 | Redigir Estimativa | 2d? | 2017-04-26 16:40 | 2017-04-28 16:40 | 16 | 0d | Homero | 16h |
| 18 | 1.2.2.3 | Revisar Estimativa | 1d? | 2017-04-28 16:40 | 2017-05-01 16:40 | 17 | 0d | Natan | 8h |
| 19 | 1.2.3 | **Cronograma Preliminar** | 5.75d? | 2017-05-01 16:40 | 2017-05-09 14:40 | 18 | 0d |  | 46h |
| 20 | 1.2.3.1 | Analisar Estimativa | 1d? | 2017-05-01 16:40 | 2017-05-02 16:40 |  | 0d | Natan | 8h |
| 21 | 1.2.3.2 | Definir Responsáveis pelas Tarefas | 2d? | 2017-05-02 16:40 | 2017-05-04 16:40 | 20 | 0d | Natan | 16h |
| 22 | 1.2.3.3 | Gerar Cronograma | 2.75d? | 2017-05-04 16:40 | 2017-05-09 14:40 | 21 | 0d | Natan | 22h |
| 23 | 1.3 | **Projeto** | 3.5d? | 2017-05-09 14:40 | 2017-05-15 09:40 | 22 | 0d |  | 28h |
| 24 | 1.3.1 | **MRB** | 3.5d? | 2017-05-09 14:40 | 2017-05-15 09:40 |  | 0d |  | 28h |
| 25 | 1.3.1.1 | Revisar Requisitos | 0.5d? | 2017-05-09 14:40 | 2017-05-10 09:40 |  | 0d | Natan | 4h |
| 26 | 1.3.1.2 | Redigir MRB | 2d? | 2017-05-10 09:40 | 2017-05-12 09:40 | 25 | 0d | Natan | 16h |
| 27 | 1.3.1.3 | Revisar MRB | 1d? | 2017-05-12 09:40 | 2017-05-15 09:40 | 26 | 0d | Natan | 8h |

| ID | WBS | Task | Duration | Start | Finish | Predecessors | Total slack | Resources | Work |
| --- | --- | --- | --- | --- | --- | --- | --- | --- | --- |
| 28 | 1.4 | **Release 1** | 11.21d? | 2017-05-15 09:40 | 2017-05-30 11:20 | 27 | 0d |  | 93h |
| 29 | 1.4.1 | **Planejamento** | 1.71d? | 2017-05-15 09:40 | 2017-05-16 16:20 |  | 0d |  | 15h |
| 30 | 1.4.1.1 | **Estimativa Tamanho Definitivo** | 0.83d? | 2017-05-15 09:40 | 2017-05-15 17:20 |  | 0d |  | 8h |
| 31 | 1.4.1.1.1 | Reunião de Definição | 0.08d? | 2017-05-15 09:40 | 2017-05-15 10:20 |  | 0d | Natan; Homero; Tiago | 2h |
| 32 | 1.4.1.1.2 | Redigir Estimativa Definitiva | 0.5d? | 2017-05-15 10:20 | 2017-05-15 15:20 | 31 | 0d | Homero | 4h |
| 33 | 1.4.1.1.3 | Revisar Estimativa Definitiva | 0.25d? | 2017-05-15 15:20 | 2017-05-15 17:20 | 32 | 0d | Homero | 2h |
| 34 | 1.4.1.2 | **Cronograma Definitivo** | 0.88d? | 2017-05-15 17:20 | 2017-05-16 16:20 | 33 | 0d |  | 7h |
| 35 | 1.4.1.2.1 | Alterar Cronograma Preliminar | 0.5d? | 2017-05-15 17:20 | 2017-05-16 13:20 |  | 0d | Natan | 4h |
| 36 | 1.4.1.2.2 | Revisar Cronograma Definitivo | 0.38d? | 2017-05-16 13:20 | 2017-05-16 16:20 | 35 | 0d | Natan | 3h |
| 37 | 1.4.2 | **Desenvolvimento** | 8.75d? | 2017-05-16 16:20 | 2017-05-29 14:20 | 36 | 0d |  | 70h |
| 38 | 1.4.2.1 | Configurar Conexão com Firebase | 2.75d? | 2017-05-16 16:20 | 2017-05-19 14:20 |  | 0d | Tiago | 22h |
| 39 | 1.4.2.2 | RF04 - Criar Usuário | 1.5d? | 2017-05-19 14:20 | 2017-05-23 09:20 | 38 | 0d | Tiago | 12h |
| 40 | 1.4.2.3 | RF05 - Deletar Usuário | 1.5d? | 2017-05-23 09:20 | 2017-05-24 14:20 | 39 | 0d | Tiago | 12h |
| 41 | 1.4.2.4 | RF06 - Editar Usuário | 1.5d? | 2017-05-24 14:20 | 2017-05-26 09:20 | 40 | 0d | Tiago | 12h |
| 42 | 1.4.2.5 | RF01 - Criar Grupo | 1.5d? | 2017-05-26 09:20 | 2017-05-29 14:20 | 41 | 0d | Tiago | 12h |
| 43 | 1.4.3 | **Testes** | 0.75d? | 2017-05-29 14:20 | 2017-05-30 11:20 | 42 | 0d |  | 8h |
| 44 | 1.4.3.1 | Testar Conexão Firebase | 0.5d? | 2017-05-29 14:20 | 2017-05-30 09:20 |  | 0d | Tiago | 4h |
| 45 | 1.4.3.2 | Testar RFs | 0.25d? | 2017-05-30 09:20 | 2017-05-30 11:20 | 44 | 0d | Tiago; Natan | 4h |
| 46 | 1.5 | **Release 2** | 12.08d? | 2017-05-30 11:20 | 2017-06-15 12:00 | 45 | 0d |  | 173h |
| 47 | 1.5.1 | **Planejamento** | 1.71d? | 2017-05-30 11:20 | 2017-05-31 18:00 |  | 0d |  | 15h |
| 48 | 1.5.1.1 | **Estimativa Tamanho Definitivo** | 0.83d? | 2017-05-30 11:20 | 2017-05-31 10:00 |  | 0d |  | 8h |
| 49 | 1.5.1.1.1 | Reunião de Definição | 0.08d? | 2017-05-30 11:20 | 2017-05-30 12:00 |  | 0d | Natan; Homero; Tiago | 2h |
| 50 | 1.5.1.1.2 | Redigir Estimativa Definitiva | 0.5d? | 2017-05-30 13:00 | 2017-05-30 17:00 | 49 | 0d | Homero | 4h |
| 51 | 1.5.1.1.3 | Revisar Estimativa Definitiva | 0.25d? | 2017-05-30 17:00 | 2017-05-31 10:00 | 50 | 0d | Homero | 2h |

| ID | WBS | Task | Duration | Start | Finish | Predecessors | Total slack | Resources | Work |
| --- | --- | --- | --- | --- | --- | --- | --- | --- | --- |
| 52 | 1.5.1.2 | **Cronograma Definitivo** | 0.88d? | 2017-05-31 10:00 | 2017-05-31 18:00 | 51 | 0d |  | 7h |
| 53 | 1.5.1.2.1 | Alterar Cronograma Preliminar | 0.5d? | 2017-05-31 10:00 | 2017-05-31 15:00 |  | 0d | Natan | 4h |
| 54 | 1.5.1.2.2 | Revisar Cronograma Definitivo | 0.38d? | 2017-05-31 15:00 | 2017-05-31 18:00 | 53 | 0d | Natan | 3h |
| 55 | 1.5.2 | **Desenvolvimento** | 9.38d? | 2017-06-01 09:00 | 2017-06-14 12:00 | 54 | 0d |  | 150h |
| 56 | 1.5.2.1 | RF02 - Remover grupo | 0.75d? | 2017-06-01 09:00 | 2017-06-01 16:00 |  | 0d | Natan; Tiago | 12h |
| 57 | 1.5.2.2 | RF03 - Editar grupo | 0.75d? | 2017-06-01 16:00 | 2017-06-02 14:00 | 56 | 0d | Natan; Tiago | 12h |
| 58 | 1.5.2.3 | RF12 - Visualizar Grupo | 0.88d? | 2017-06-02 14:00 | 2017-06-05 12:00 | 57 | 0d | Natan; Tiago | 14h |
| 59 | 1.5.2.4 | RF14 - Editar Administrador do Grupo | 0.88d? | 2017-06-05 13:00 | 2017-06-06 11:00 | 58 | 0d | Natan; Tiago | 14h |
| 60 | 1.5.2.5 | RF16 - Adicionar Instituição | 0.88d? | 2017-06-06 11:00 | 2017-06-07 10:00 | 59 | 0d | Natan; Tiago | 14h |
| 61 | 1.5.2.6 | RF17 - Editar Instituição | 0.88d? | 2017-06-07 10:00 | 2017-06-07 18:00 | 60 | 0d | Natan; Tiago | 14h |
| 62 | 1.5.2.7 | RF18 - Buscar Instituição | 0.88d? | 2017-06-08 09:00 | 2017-06-08 17:00 | 61 | 0d | Natan; Tiago | 14h |
| 63 | 1.5.2.8 | RF23 - Criar Aulas | 0.88d? | 2017-06-08 17:00 | 2017-06-09 16:00 | 62 | 0d | Natan; Tiago | 14h |
| 64 | 1.5.2.9 | RF24 - Visualizar Aulas | 0.88d? | 2017-06-09 16:00 | 2017-06-12 15:00 | 63 | 0d | Natan; Tiago | 14h |
| 65 | 1.5.2.10 | RF25 - Remover Aulas | 0.88d? | 2017-06-12 15:00 | 2017-06-13 14:00 | 64 | 0d | Natan; Tiago | 14h |
| 66 | 1.5.2.11 | RF26 - Editar Aulas | 0.88d? | 2017-06-13 14:00 | 2017-06-14 12:00 | 65 | 0d | Natan; Tiago | 14h |
| 67 | 1.5.3 | **Testes** | 1d? | 2017-06-14 13:00 | 2017-06-15 12:00 | 66 | 0d |  | 8h |
| 68 | 1.5.3.1 | Testar RFs | 1d? | 2017-06-14 13:00 | 2017-06-15 12:00 |  | 0d | Homero | 8h |
| 69 | 1.6 | **Release 3** | 12.21d? | 2017-06-15 13:00 | 2017-07-03 14:40 | 68 | 0d |  | 175h |
| 70 | 1.6.1 | **Planejamento** | 1.71d? | 2017-06-15 13:00 | 2017-06-19 09:40 |  | 0d |  | 15h |
| 71 | 1.6.1.1 | **Estimativa Tamanho Definitivo** | 0.83d? | 2017-06-15 13:00 | 2017-06-16 10:40 |  | 0d |  | 8h |
| 72 | 1.6.1.1.1 | Reunião de Definição | 0.08d? | 2017-06-15 13:00 | 2017-06-15 13:40 |  | 0d | Homero; Natan; Tiago | 2h |
| 73 | 1.6.1.1.2 | Redigir Estimativa Definitiva | 0.5d? | 2017-06-15 13:40 | 2017-06-15 17:40 | 72 | 0d | Homero | 4h |
| 74 | 1.6.1.1.3 | Revisar Estimativa Definitiva | 0.25d? | 2017-06-15 17:40 | 2017-06-16 10:40 | 73 | 0d | Homero | 2h |
| 75 | 1.6.1.2 | **Cronograma Definitivo** | 0.88d? | 2017-06-16 10:40 | 2017-06-19 09:40 | 74 | 0d |  | 7h |
| 76 | 1.6.1.2.1 | Alterar Cronograma Preliminar | 0.5d? | 2017-06-16 10:40 | 2017-06-16 15:40 |  | 0d | Homero | 4h |
| 77 | 1.6.1.2.2 | Revisar Cronograma Definitivo | 0.38d? | 2017-06-16 15:40 | 2017-06-19 09:40 | 76 | 0d | Homero | 3h |

| ID | WBS | Task | Duration | Start | Finish | Predecessors | Total slack | Resources | Work |
| --- | --- | --- | --- | --- | --- | --- | --- | --- | --- |
| 78 | 1.6.2 | **Desenvolvimento** | 9.5d? | 2017-06-19 09:40 | 2017-06-30 14:40 | 77 | 0d |  | 152h |
| 79 | 1.6.2.1 | RF07 - Criar Conversa | 2d? | 2017-06-19 09:40 | 2017-06-21 09:40 |  | 0d | Natan; Tiago | 32h |
| 80 | 1.6.2.2 | RF13 - Visualizar Conversa | 0.75d? | 2017-06-21 09:40 | 2017-06-21 16:40 | 79 | 0d | Natan; Tiago | 12h |
| 81 | 1.6.2.3 | RF08 - Criar Convite | 0.75d? | 2017-06-21 16:40 | 2017-06-22 14:40 | 80 | 0d | Natan; Tiago | 12h |
| 82 | 1.6.2.4 | RF09 - Rejeitar Convite | 0.75d? | 2017-06-22 14:40 | 2017-06-23 11:40 | 81 | 0d | Natan; Tiago | 12h |
| 83 | 1.6.2.5 | RF10 - Aceitar Convite | 0.75d? | 2017-06-23 11:40 | 2017-06-26 09:40 | 82 | 0d | Natan; Tiago | 12h |
| 84 | 1.6.2.6 | RF11 - Revogar Convite | 0.75d? | 2017-06-26 09:40 | 2017-06-26 16:40 | 83 | 0d | Natan; Tiago | 12h |
| 85 | 1.6.2.7 | RF15 - Compartilhar Mídia | 0.75d? | 2017-06-26 16:40 | 2017-06-27 14:40 | 84 | 0d | Natan; Tiago | 12h |
| 86 | 1.6.2.8 | RF19 - Criar Enquete | 0.75d? | 2017-06-27 14:40 | 2017-06-28 11:40 | 85 | 0d | Natan; Tiago | 12h |
| 87 | 1.6.2.9 | RF20 - Visualizar Enquete | 0.75d? | 2017-06-28 11:40 | 2017-06-29 09:40 | 86 | 0d | Natan; Tiago | 12h |
| 88 | 1.6.2.10 | RF21 - Remover Enquete | 0.75d? | 2017-06-29 09:40 | 2017-06-29 16:40 | 87 | 0d | Natan; Tiago | 12h |
| 89 | 1.6.2.11 | RF22 - Editar Enquete | 0.75d? | 2017-06-29 16:40 | 2017-06-30 14:40 | 88 | 0d | Natan; Tiago | 12h |
| 90 | 1.6.3 | **Testes** | 1d? | 2017-06-30 14:40 | 2017-07-03 14:40 | 89 | 0d |  | 8h |
| 91 | 1.6.3.1 | Testar RFs | 1d? | 2017-06-30 14:40 | 2017-07-03 14:40 |  | 0d | Homero | 8h |
| 92 | 1.7 | **Fechamento** | 4d? | 2017-07-03 14:40 | 2017-07-07 14:40 | 91 | 0d |  | 48h |
| 93 | 1.7.1 | Publicar Aplicativo | 1d? | 2017-07-03 14:40 | 2017-07-04 14:40 |  | 3d | Natan; Tiago | 16h |
| 94 | 1.7.2 | Relatório Lições Aprendidas | 3d? | 2017-07-03 14:40 | 2017-07-06 14:40 |  | 0d | Homero | 24h |
| 95 | 1.7.3 | Atualizar Experiências Prévias | 1d? | 2017-07-06 14:40 | 2017-07-07 14:40 | 94 | 0d | Homero | 8h |
